# y03s01-softeng-lab-04-v01

Schedule from MS Project, 2018-09-25 to 2018-11-21, A marks actual dates.

## Calendars

- Стандартный: Mon-Fri 09:00-13:00, 14:00-18:00; Sat-Sun off.

## Resources

| Resource |
| --- |
| Руководитель проекта |
| Системный аналитик |
| Главный программист |
| Программист |
| Главный системный администратор |
| Системный администратор |
| HR-специалист |
| Инструктор |

## Schedule

| ID | WBS | Task | Type | Duration | Start | Finish | Predecessors | Complete | Total slack | Resources | Work | Actual work |
| --- | --- | --- | --- | --- | --- | --- | --- | --- | --- | --- | --- | --- |
| 1 | 1 | Початок робіт | milestone | 0d | 2018-09-25 | 2018-09-25 |  |  | 0d |  |  |  |
| 2 | 2 | **Формування вимог** |  | 2.5d | 2018-09-25 A | 2018-09-27 A | 1 | 100% |  |  | 40h | 40h |
| 3 | 2.1 | Обстеження об'єкта та обгрунтування необхідності створення Системи |  | 0.5d | 2018-09-25 A | 2018-09-25 A |  | 100% |  | Руководитель проекта; Системный аналитик | 8h | 8h |
| 4 | 2.2 | Формування вимог користувача до Системи |  | 1.5d | 2018-09-25 A | 2018-09-26 A | 3 | 100% |  | Руководитель проекта; Системный аналитик | 24h | 24h |
| 5 | 2.3 | Оформлення звіту про виконану роботу і заявки на розробку Системи |  | 0.5d | 2018-09-27 A | 2018-09-27 A | 4 | 100% |  | Руководитель проекта; Системный аналитик | 8h | 8h |
| 6 | 3 | **Розробка концепції системи** |  | 3.5d | 2018-09-27 | 2018-10-02 | 2 |  | 0d |  | 56h |  |
| 7 | 3.1 | Дослідження об'єкта |  | 0.5d | 2018-09-27 | 2018-09-27 |  |  | 0d | Руководитель проекта; Системный аналитик | 8h |  |
| 8 | 3.2 | Проведення необхідних дослідницьких робіт |  | 0.5d | 2018-09-28 | 2018-09-28 | 7 |  | 0d | Руководитель проекта; Системный аналитик | 8h |  |
| 9 | 3.3 | Розробка варіантів концепції Системи, що задовольняє вимоги користувача |  | 2d | 2018-09-28 | 2018-10-02 | 8 |  | 0d | Руководитель проекта; Системный аналитик | 32h |  |
| 10 | 3.4 | Оформлення звіту про виконану роботу |  | 0.5d | 2018-10-02 | 2018-10-02 | 9 |  | 0d | Руководитель проекта; Системный аналитик | 8h |  |
| 11 | 4 | **Технічне завдання** |  | 3.5d | 2018-10-03 | 2018-10-08 | 10, 6 |  | 0d |  | 84h |  |
| 12 | 4.1 | Розробка технічного завдання на створення системи |  | 3.5d | 2018-10-03 | 2018-10-08 |  |  | 0d | Руководитель проекта; Системный аналитик; Главный программист | 84h |  |
| 13 | 5 | **Ескізний проект** |  | 2d | 2018-10-08 | 2018-10-10 | 11 |  | 0d |  | 48h |  |
| 14 | 5.1 | Розробка попередніх проектних рішень по системі та її складовим |  | 1d | 2018-10-08 | 2018-10-09 | 12 |  | 0d | Руководитель проекта; Главный программист; Программист | 24h |  |
| 15 | 5.2 | Розробка документації на Систему та її складові |  | 1d | 2018-10-09 | 2018-10-10 | 14 |  | 0d | Руководитель проекта; Главный программист; Программист | 24h |  |
| 16 | 6 | **Технічний проект** |  | 5.5d | 2018-10-10 | 2018-10-17 | 13 |  | 0d |  | 192h |  |
| 17 | 6.1 | Розробка проектних рішень по Системі та її складовим |  | 2.5d | 2018-10-10 | 2018-10-12 | 15 |  | 0d | Руководитель проекта; Системный аналитик; Главный программист | 60h |  |
| 18 | 6.2 | Розробка документації на Систему та її складові |  | 3d | 2018-10-15 | 2018-10-17 | 17 |  | 0d | Руководитель проекта; Программист | 48h |  |
| 19 | 6.3 | Розробка та оформлення документації на поставку виробів для комплектації Системи |  | 1.5d | 2018-10-15 | 2018-10-16 | 17 |  | 1.5d | Руководитель проекта; Программист; Системный администратор | 36h |  |
| 20 | 6.4 | Розробка завдань на проектування у суміжних частинах проекту об'єкту автоматизації |  | 3d | 2018-10-15 | 2018-10-17 | 17 |  | 0d | Руководитель проекта; Главный программист | 48h |  |
| 21 | 7 | **Робоча документація** |  | 13d | 2018-10-18 | 2018-11-05 | 16 |  | 0d |  | 264h |  |
| 22 | 7.1 | Розробка робочої документації на Систему та її складові |  | 6d | 2018-10-18 | 2018-10-25 | 18 |  | 0d | Руководитель проекта; Программист | 96h |  |
| 23 | 7.2 | Розробка чи адаптація програм |  | 7d | 2018-10-26 | 2018-11-05 | 22 |  | 0d | Руководитель проекта; Программист; Главный программист | 168h |  |
| 24 | 8 | **Введення в експлуатацію** |  | 12d | 2018-11-06 | 2018-11-21 | 21 |  | 0d |  | 364h |  |
| 25 | 8.1 | Підготовка об'єкту автоматизації до вводу Системи в експлуатацію |  | 1.5d | 2018-11-06 | 2018-11-07 | 23 |  | 10.5d | Руководитель проекта; Системный аналитик; Системный администратор | 36h |  |
| 26 | 8.2 | Підготовка персоналу |  | 5d | 2018-11-06 | 2018-11-12 | 23 |  | 7d | Руководитель проекта; Инструктор | 80h |  |
| 27 | 8.3 | Комплектація Системи необхідними виробами |  | 2d | 2018-11-06 | 2018-11-07 | 23 |  | 0d | Руководитель проекта; Системный администратор | 32h |  |
| 28 | 8.4 | Будівельно-монтажні роботи |  | 3d | 2018-11-08 | 2018-11-12 | 27 |  | 0d | Руководитель проекта; Системный администратор | 48h |  |
| 29 | 8.5 | Пусконалагоджувальні роботи |  | 1d | 2018-11-13 | 2018-11-13 | 28 |  | 0d | Руководитель проекта; Системный администратор; Главный системный администратор | 24h |  |
| 30 | 8.6 | Проведення попередніх випробувань |  | 3d | 2018-11-14 | 2018-11-16 | 29 |  | 0d | Руководитель проекта; Системный аналитик; Системный администратор | 72h |  |
| 31 | 8.7 | Проведення дослідної експлуатації |  | 1.5d | 2018-11-19 | 2018-11-20 | 30 |  | 0d | Руководитель проекта; Главный системный администратор; Системный аналитик | 36h |  |
| 32 | 8.8 | Проведення прийомних дослідів |  | 1.5d | 2018-11-20 | 2018-11-21 | 31 |  | 0d | Руководитель проекта; Главный системный администратор; Системный администратор | 36h |  |
| 33 | 9 | Завершення робіт | milestone | 0d | 2018-11-21 | 2018-11-21 | 32, 24 |  | 0d |  |  |  |
